# NCICBSecurityService

Schedule from MS Project, 2004-08-02 to 2005-03-31, A marks actual dates.
Home

## Calendars

- Standard: Mon-Fri 08:00-12:00, 13:00-17:00; Sat-Sun off.

## Resources

| Resource |
| --- |
| Vinay |
| Resource 1 |
| Brian |
| Kalpesh |
| Kunal |
| Eric |
| Charles |
| Team |
| Steve |
| JJ |
| Kunal Eric |
| Viany |

## Schedule

| ID | WBS | Task | Duration | Start | Finish | Predecessors | Complete | Constraint | Resources | Work | Actual work |
| --- | --- | --- | --- | --- | --- | --- | --- | --- | --- | --- | --- |
| 1 | 1 | **Security Module (Release One)** | 174d? | 2004-08-02 A | 2005-03-31 A |  | 100% |  |  | 9745.6h | 9745.6h |
| 2 | 1.1 | **Inception** | 38d | 2004-08-02 A | 2004-09-22 A |  | 100% |  |  | 512h | 512h |
| 3 | 1.1.1 | Phase I Evaluation | 7d | 2004-08-02 A | 2004-08-10 A |  | 100% | start no earlier than 2004-08-02 | Vinay; Brian | 112h | 112h |
| 4 | 1.1.2 | Interview NCICB Team Leads | 12d | 2004-08-09 A | 2004-08-24 A |  | 100% | start no earlier than 2004-08-09 | Vinay; Brian | 192h | 192h |
| 5 | 1.1.3 | Scope and Vision Document | 10d | 2004-08-30 A | 2004-09-10 A |  | 100% | start no earlier than 2004-08-30 | Brian | 80h | 80h |
| 6 | 1.1.4 | Supplentary Specifications | 3d | 2004-09-01 A | 2004-09-03 A | 4 | 100% | start no earlier than 2004-09-01 | Vinay | 24h | 24h |
| 7 | 1.1.5 | Fuctional Specifications | 5d | 2004-09-06 A | 2004-09-10 A | 6 | 100% |  | Vinay | 40h | 40h |
| 8 | 1.1.6 | Use Case Model | 5d | 2004-09-13 A | 2004-09-17 A | 7 | 100% |  | Vinay | 40h | 40h |
| 9 | 1.1.7 | Identify Risk List | 3d | 2004-09-20 A | 2004-09-22 A | 8 | 100% |  | Kalpesh | 24h | 24h |
| 10 | 1.2 | **Elaboration** | 23d? | 2004-09-27 A | 2004-10-27 A |  | 100% |  |  | 452h | 452h |
| 11 | 1.2.1 | **Iteration I** | 13d | 2004-09-27 A | 2004-10-13 A |  | 100% |  |  | 152h | 152h |
| 12 | 1.2.1.1 | Level 1 - 2 Use Cases | 5d | 2004-09-27 A | 2004-10-01 A |  | 100% |  | Vinay | 40h | 40h |
| 13 | 1.2.1.2 | Risk List Priority | 3d | 2004-09-27 A | 2004-09-29 A |  | 100% |  | Vinay | 24h | 24h |
| 14 | 1.2.1.3 | Detailed Iteration Release Plan | 5d | 2004-09-27 A | 2004-10-01 A |  | 100% |  | Vinay; Brian | 80h | 80h |
| 15 | 1.2.1.4 | **Finalize Requirements** | 9d | 2004-10-01 A | 2004-10-13 A |  | 100% |  |  | 8h | 8h |
| 16 | 1.2.1.4.1 | Stakeholder Sign Off | 1d | 2004-10-01 A | 2004-10-01 A |  | 100% | start no earlier than 2004-10-01 |  |  |  |
| 17 | 1.2.1.4.2 | User Working Group Review | 1d | 2004-10-13 A | 2004-10-13 A | 16 | 100% | start no earlier than 2004-10-13 | Vinay | 8h | 8h |
| 18 | 1.2.2 | **Iteration II** | 17d? | 2004-10-05 A | 2004-10-27 A |  | 100% |  |  | 300h | 300h |
| 19 | 1.2.2.1 | Develop Architecture Prototype | 3d | 2004-10-25 A | 2004-10-27 A |  | 100% | start no earlier than 2004-10-25 |  |  |  |
| 20 | 1.2.2.2 | Software Architecture Document | 15d | 2004-10-05 A | 2004-10-25 A |  | 100% | finish no earlier than 2004-10-25 | Vinay; Kunal; Eric | 276h | 276h |
| 21 | 1.2.2.3 | Architecture Review | 1d? | 2004-10-26 A | 2004-10-26 A | 20 | 100% |  | Brian; Kalpesh | 16h | 16h |
| 22 | 1.2.2.4 | Prioritize Risk List | 1d | 2004-10-26 A | 2004-10-26 A |  | 100% | start no earlier than 2004-10-26 | Vinay | 8h | 8h |
| 23 | 1.3 | Phase Review | 1d? | 2004-09-27 A | 2004-09-27 A |  | 100% |  | Eric; Kalpesh | 16h | 16h |
| 24 | 1.4 | **Construction** | 130d? | 2004-09-26 A | 2005-03-25 A |  | 100% |  |  | 7876h | 7876h |
| 25 | 1.4.1 | **Iteration I** | 40d? | 2004-09-26 A | 2004-11-19 A |  | 100% |  |  | 328h | 328h |
| 26 | 1.4.1.1 | Iteration Plan | 1d | 2004-10-26 A | 2004-10-26 A |  | 100% | start no earlier than 2004-10-26 | Vinay; Kunal | 16h | 16h |

Notes:
- 16: An email was sent out to the group and no one responded. Hence this task has been marked as 100%

| ID | WBS | Task | Type | Duration | Start | Finish | Predecessors | Complete | Constraint | Resources | Work | Actual work |
| --- | --- | --- | --- | --- | --- | --- | --- | --- | --- | --- | --- | --- |
| 27 | 1.4.1.2 | **Authentication** |  | 40d? | 2004-09-27 A | 2004-11-19 A |  | 100% |  |  | 312h | 312h |
| 28 | 1.4.1.2.1 | **Design** |  | 4d | 2004-10-27 A | 2004-11-01 A |  | 100% |  |  | 56h | 56h |
| 29 | 1.4.1.2.1.1 | **Documentation** |  | 4d | 2004-10-27 A | 2004-11-01 A |  | 100% |  |  | 56h | 56h |
| 30 | 1.4.1.2.1.1.1 | Level 3 - 4 Use Cases |  | 0.5d | 2004-10-27 A | 2004-10-27 A |  | 100% | start no earlier than 2004-10-27 | Kunal; Vinay | 8h | 8h |
| 31 | 1.4.1.2.1.1.2 | Use Case Model |  | 0.5d | 2004-10-27 A | 2004-10-27 A | 30 | 100% | start no earlier than 2004-10-27 | Vinay; Kunal | 8h | 8h |
| 32 | 1.4.1.2.1.1.3 | Working Group Use Case Review |  | 1d | 2004-10-28 A | 2004-10-28 A | 31 | 100% |  | Kalpesh | 8h | 8h |
| 33 | 1.4.1.2.1.1.4 | UML Sequence Diagram |  | 1d | 2004-10-29 A | 2004-10-29 A | 32 | 100% |  | Kunal | 8h | 8h |
| 34 | 1.4.1.2.1.1.5 | UML Class Diagram |  | 1d | 2004-11-01 A | 2004-11-01 A | 33 | 100% |  | Vinay | 8h | 8h |
| 35 | 1.4.1.2.1.1.6 | UML Activity Diagram |  | 1d | 2004-10-29 A | 2004-10-29 A |  | 100% | start no earlier than 2004-10-29 | Vinay | 8h | 8h |
| 36 | 1.4.1.2.1.1.7 | Design Review |  | 1d | 2004-11-01 A | 2004-11-01 A | 35 | 100% |  | Brian | 8h | 8h |
| 37 | 1.4.1.2.2 | **Implementation** |  | 11d | 2004-11-01 A | 2004-11-15 A |  | 100% |  |  | 208h | 208h |
| 38 | 1.4.1.2.2.1 | Data Model Enhancement |  | 5d | 2004-11-01 A | 2004-11-05 A |  | 100% | start no earlier than 2004-11-01 | Vinay; Kalpesh | 80h | 80h |
| 39 | 1.4.1.2.2.2 | Data Model Documentation with Examples |  | 1d | 2004-11-08 A | 2004-11-08 A |  | 100% | start no earlier than 2004-11-08 | Vinay | 8h | 8h |
| 40 | 1.4.1.2.2.3 | **JAAS Authentication Modules** |  | 10d | 2004-11-02 A | 2004-11-15 A |  | 100% |  |  | 120h | 120h |
| 41 | 1.4.1.2.2.3.1 | LDAP |  | 5d | 2004-11-02 A | 2004-11-08 A | 36 | 100% | start no earlier than 2004-11-02 | Kunal | 40h | 40h |
| 42 | 1.4.1.2.2.3.2 | RBDMS |  | 5d | 2004-11-08 A | 2004-11-12 A | 36 | 100% | finish no earlier than 2004-11-12 | Vinay | 40h | 40h |
| 43 | 1.4.1.2.2.3.3 | Junit Test Development |  | 4d | 2004-11-09 A | 2004-11-12 A |  | 100% | finish no earlier than 2004-11-12 | Brian | 32h | 32h |
| 44 | 1.4.1.2.2.3.4 | Code Reviews |  | 0.33d | 2004-11-15 A | 2004-11-15 A | 41, 42, 43 | 100% | finish no earlier than 2004-11-15 | Brian; Kalpesh; Charles | 8h | 8h |
| 45 | 1.4.1.2.3 | **Unit Testing** |  | 40d? | 2004-09-27 A | 2004-11-19 A |  | 100% |  |  | 48h | 48h |
| 46 | 1.4.1.2.3.1 | Perform Testing |  | 1d | 2004-11-16 A | 2004-11-16 A | 44 | 100% | start no earlier than 2004-11-15 | Kunal | 8h | 8h |
| 47 | 1.4.1.2.3.2 | Evaluate Results |  | 1d | 2004-11-17 A | 2004-11-17 A | 46 | 100% | start no earlier than 2004-11-16 | Eric; Vinay; Kunal | 24h | 24h |
| 48 | 1.4.1.2.3.3 | Integration Testing |  | 1d | 2004-11-18 A | 2004-11-18 A | 47 | 100% |  | Eric | 8h | 8h |
| 49 | 1.4.1.2.3.4 | User Working Group Review (SAD, Design Models) |  | 1d | 2004-11-19 A | 2004-11-19 A | 48 | 100% |  | Kalpesh | 8h | 8h |
| 50 | 1.4.1.2.3.5 | Synch the EA Model |  | 1d? | 2004-09-27 A | 2004-09-27 A |  | 100% |  |  |  |  |
| 51 | 1.4.1.3 | Iteration I Complete | milestone | 0d | 2004-09-26 A | 2004-09-26 A |  | 100% |  |  |  |  |

| ID | WBS | Task | Type | Duration | Start | Finish | Predecessors | Complete | Constraint | Resources | Work | Actual work |
| --- | --- | --- | --- | --- | --- | --- | --- | --- | --- | --- | --- | --- |
| 52 | 1.4.2 | **Iteration II** |  | 23.5d? | 2004-11-23 A | 2004-12-24 A |  | 100% |  |  | 868h | 868h |
| 53 | 1.4.2.1 | Iteration Plan |  | 1d | 2004-11-30 A | 2004-11-30 A |  | 100% | start no earlier than 2004-11-30 | Vinay | 8h | 8h |
| 54 | 1.4.2.2 | **Authorization** |  | 23.5d? | 2004-11-23 A | 2004-12-24 A |  | 100% |  |  | 860h | 860h |
| 55 | 1.4.2.2.1 | **Design** |  | 6d | 2004-12-01 A | 2004-12-08 A |  | 100% |  |  | 64h | 64h |
| 56 | 1.4.2.2.1.1 | **Documentation** |  | 6d | 2004-12-01 A | 2004-12-08 A |  | 100% |  |  | 64h | 64h |
| 57 | 1.4.2.2.1.1.1 | Level 3 - 4 Use Cases |  | 1d | 2004-12-01 A | 2004-12-01 A |  | 100% | start no earlier than 2004-12-01 | Vinay; Kunal | 16h | 16h |
| 58 | 1.4.2.2.1.1.2 | Use Case Model |  | 1d | 2004-12-01 A | 2004-12-01 A | 53 | 100% | start no earlier than 2004-11-22 | Kunal | 8h | 8h |
| 59 | 1.4.2.2.1.1.3 | User Working Group Review |  | 1d | 2004-12-02 A | 2004-12-02 A | 58 | 100% |  | Kalpesh | 8h | 8h |
| 60 | 1.4.2.2.1.1.4 | UML Sequence Diagram |  | 1d | 2004-12-03 A | 2004-12-03 A | 59 | 100% |  | Kunal | 8h | 8h |
| 61 | 1.4.2.2.1.1.5 | UML Class Diagram |  | 1d | 2004-12-06 A | 2004-12-06 A | 60 | 100% |  | Vinay | 8h | 8h |
| 62 | 1.4.2.2.1.1.6 | UML Activity Diagram |  | 1d | 2004-12-06 A | 2004-12-06 A |  | 100% | start no earlier than 2004-12-06 | Vinay | 8h | 8h |
| 63 | 1.4.2.2.1.1.7 | Design Review |  | 1d | 2004-12-07 A | 2004-12-07 A | 62 | 100% |  | Brian | 8h | 8h |
| 64 | 1.4.2.2.1.1.8 | UML Model for EVS |  | 2d | 2004-12-07 A | 2004-12-08 A |  | 100% | start no earlier than 2004-12-07 |  |  |  |
| 65 | 1.4.2.2.2 | **Implementation** |  | 23.5d? | 2004-11-23 A | 2004-12-24 A |  | 100% |  |  | 796h | 796h |
| 66 | 1.4.2.2.2.1 | Authorization XML Schema |  | 10d | 2004-12-09 A | 2004-12-22 A |  | 100% | start no earlier than 2004-12-09 | Vinay; Brian | 160h | 160h |
| 67 | 1.4.2.2.2.2 | **Authorization API** |  | 23.5d? | 2004-11-23 A | 2004-12-24 A |  | 100% |  |  | 636h | 636h |
| 68 | 1.4.2.2.2.2.1 | Enhance Phase I Object Model |  | 7d | 2004-11-23 A | 2004-12-01 A | 38 | 100% | start no earlier than 2004-12-23 | Vinay | 56h | 56h |
| 69 | 1.4.2.2.2.2.2 | **develop run time API** |  | 16.5d? | 2004-12-02 A | 2004-12-24 A | 68 | 100% |  | Brian; Vinay | 580h | 580h |
| 70 | 1.4.2.2.2.2.2.1 | Implement AuthorizationManager Interface |  | 15d | 2004-12-02 A | 2004-12-22 A |  | 100% | finish no earlier than 2004-12-22 | Brian; Vinay | 240h | 240h |
| 71 | 1.4.2.2.2.2.2.2 | Junit Test Development |  | 4.5d | 2004-12-16 A | 2004-12-22 A |  | 100% | finish no earlier than 2004-12-22 | Brian; Vinay | 72h | 72h |
| 72 | 1.4.2.2.2.2.2.3 | Code Review |  | 1d | 2004-12-23 A | 2004-12-24 A | 71 | 100% |  | Charles; Steve | 16h | 16h |
| 73 | 1.4.2.2.2.2.2.4 | Synch the EA Model |  | 1d? | 2004-12-02 A | 2004-12-02 A |  | 100% |  |  |  |  |
| 74 | 1.4.2.3 | Iteration II Complete | milestone | 0d | 2004-12-21 A | 2004-12-21 A |  | 100% | start no earlier than 2004-12-21 |  |  |  |
| 75 | 1.4.3 | **Iteration III** |  | 130d | 2004-09-27 A | 2005-03-25 A |  | 100% |  |  | 1152h | 1152h |
| 76 | 1.4.3.1 | Iteration Plan |  | 1d | 2004-12-21 A | 2004-12-21 A |  | 100% | start no earlier than 2004-12-21 |  |  |  |

| ID | WBS | Task | Duration | Start | Finish | Predecessors | Complete | Constraint | Resources | Work | Actual work |
| --- | --- | --- | --- | --- | --- | --- | --- | --- | --- | --- | --- |
| 77 | 1.4.3.2 | **Prototype (Reference Implementation)** | 130d | 2004-09-27 A | 2005-03-25 A |  | 100% |  |  | 1152h | 1152h |
| 78 | 1.4.3.2.1 | **Implementation** | 59d | 2005-01-04 A | 2005-03-25 A |  | 100% |  |  | 776h | 776h |
| 79 | 1.4.3.2.1.1 | **Demo Application** | 59d | 2005-01-04 A | 2005-03-25 A |  | 100% |  |  | 776h | 776h |
| 80 | 1.4.3.2.1.1.1 | Use Case Development | 1d | 2005-01-07 A | 2005-01-07 A |  | 100% | start no earlier than 2005-01-07 | Eric | 8h | 8h |
| 81 | 1.4.3.2.1.1.2 | Integrate Authentication | 2d | 2005-01-27 A | 2005-01-28 A | 76 | 100% | finish no earlier than 2005-01-28 | Vinay; Brian | 32h | 32h |
| 82 | 1.4.3.2.1.1.3 | **User Interface** | 21d | 2005-01-04 A | 2005-02-01 A | 81 | 100% |  | Vinay; Brian | 496h | 496h |
| 83 | 1.4.3.2.1.1.3.1 | Develop Struts Actions, Forms, Config, Validation | 10d | 2005-01-04 A | 2005-02-01 A |  | 100% |  | Eric; Brian | 160h | 160h |
| 84 | 1.4.3.2.1.1.3.2 | domain/persistance | 8d | 2005-01-11 A | 2005-02-01 A |  | 100% | finish no earlier than 2005-01-20 |  |  |  |
| 85 | 1.4.3.2.1.1.4 | Integrate Authorization | 15d | 2005-03-07 A | 2005-03-25 A |  | 100% | start no earlier than 2005-03-07 | Brian; Vinay | 240h | 240h |
| 86 | 1.4.3.2.2 | **Documentation** | 109d | 2004-09-27 A | 2005-02-24 A |  | 100% |  |  | 376h | 376h |
| 87 | 1.4.3.2.2.1 | User Guide (RI) | 23d | 2005-01-25 A | 2005-02-24 A |  | 100% | finish no earlier than 2005-02-24 | Vinay; Eric | 368h | 368h |
| 88 | 1.4.3.2.2.2 | Synch the EA Model | 1d | 2004-09-27 A | 2004-09-27 A |  | 100% |  | Vinay | 8h | 8h |
| 89 | 1.4.4 | **Iteration IV** | 123d | 2004-09-27 A | 2005-03-16 A |  | 100% |  | Brian | 5528h | 5528h |
| 90 | 1.4.4.1 | Iteration Plan | 2d | 2004-10-18 A | 2004-10-19 A |  | 100% | start no earlier than 2004-10-18 | Brian | 16h | 16h |
| 91 | 1.4.4.2 | **User Provisioning** | 123d | 2004-09-27 A | 2005-03-16 A |  | 100% |  | Brian | 4680h | 4680h |
| 92 | 1.4.4.2.1 | **Design** | 27d | 2004-10-20 A | 2004-11-25 A |  | 100% |  | Brian | 504h | 504h |
| 93 | 1.4.4.2.1.1 | **Documentation** | 27d | 2004-10-20 A | 2004-11-25 A |  | 100% |  | Brian | 288h | 288h |
| 94 | 1.4.4.2.1.1.1 | Level 3 - 4 Use Cases | 1d | 2004-10-27 A | 2004-10-27 A | 90 | 100% | start no earlier than 2004-10-27 | Brian | 8h | 8h |
| 95 | 1.4.4.2.1.1.2 | Use Case Model | 6d | 2004-10-20 A | 2004-10-27 A | 90 | 100% | finish no earlier than 2004-10-27 | Brian | 48h | 48h |
| 96 | 1.4.4.2.1.1.3 | Gather Requirements | 5d | 2004-10-28 A | 2004-11-03 A | 95 | 100% |  |  |  |  |
| 97 | 1.4.4.2.1.1.4 | Create DDL for mysql | 1d | 2004-11-10 A | 2004-11-10 A |  | 100% | start no earlier than 2004-11-10 |  |  |  |
| 98 | 1.4.4.2.1.1.5 | Generate Hibernate Mappings | 1d | 2004-11-22 A | 2004-11-22 A | 97 | 100% |  |  |  |  |
| 99 | 1.4.4.2.1.1.6 | Generate Hibernate Mappings | 1d | 2004-11-23 A | 2004-11-23 A | 98 | 100% |  |  |  |  |
| 100 | 1.4.4.2.1.1.7 | UML Class Diagram | 1d | 2004-11-24 A | 2004-11-24 A | 99 | 100% |  | Brian | 8h | 8h |
| 101 | 1.4.4.2.1.1.8 | Design Review | 1d | 2004-11-25 A | 2004-11-25 A | 100 | 100% | finish no earlier than 2004-11-15 | Eric | 8h | 8h |

Notes:
- 82: Gap of a week exists. Evaluate again when Iteration 3 begins

| ID | WBS | Task | Type | Duration | Start | Finish | Predecessors | Complete | Constraint | Resources | Work | Actual work |
| --- | --- | --- | --- | --- | --- | --- | --- | --- | --- | --- | --- | --- |
| 102 | 1.4.4.2.2 | **Implementation** |  | 50d | 2004-11-29 A | 2005-02-04 A |  | 100% |  | Brian; Vinay | 3272h | 3272h |
| 103 | 1.4.4.2.2.1 | Create Hibernate Mappings |  | 4d | 2004-12-03 A | 2004-12-08 A |  | 100% | start no earlier than 2004-12-03 | Brian; Vinay | 64h | 64h |
| 104 | 1.4.4.2.2.2 | Create Roles |  | 3.75d | 2004-11-29 A | 2004-12-10 A | 103 | 100% | start no earlier than 2004-11-29 | Brian; Vinay | 40h | 40h |
| 105 | 1.4.4.2.2.3 | Modify Roles |  | 2.5d | 2004-12-10 A | 2004-12-14 A | 104 | 100% |  | Brian; Vinay | 40h | 40h |
| 106 | 1.4.4.2.2.4 | Create Privileges |  | 1.5d | 2004-12-14 A | 2004-12-16 A | 105 | 100% |  | Brian; Vinay | 24h | 24h |
| 107 | 1.4.4.2.2.5 | Modify Privileges |  | 1.5d | 2004-12-16 A | 2004-12-17 A | 106 | 100% |  | Brian; Vinay | 24h | 24h |
| 108 | 1.4.4.2.2.6 | Assign Privileges to Roles |  | 1.5d | 2004-12-17 A | 2004-12-21 A | 107 | 100% |  | Brian; Vinay | 24h | 24h |
| 109 | 1.4.4.2.2.7 | Create Protection Elements |  | 1d | 2004-12-21 A | 2004-12-22 A | 108 | 100% |  | Brian; Vinay | 16h | 16h |
| 110 | 1.4.4.2.2.8 | Modify Protection Elements |  | 1d | 2004-12-22 A | 2004-12-23 A | 109 | 100% |  | Brian [133.3%]; Vinay | 16h | 16h |
| 111 | 1.4.4.2.2.9 | Create Protection Group |  | 1d | 2004-12-23 A | 2004-12-24 A | 110 | 100% |  | Brian [33.3%]; Vinay | 16h | 16h |
| 112 | 1.4.4.2.2.10 | Modify Protection Group |  | 1d | 2004-12-24 A | 2004-12-27 A | 111 | 100% |  | Brian [11.1%]; Vinay | 16h | 16h |
| 113 | 1.4.4.2.2.11 | Assign Protection Elements to Groups |  | 1d | 2004-12-27 A | 2004-12-28 A | 112 | 100% |  | Brian [33.3%]; Vinay | 16h | 16h |
| 114 | 1.4.4.2.2.12 | Assign Protection Elements to Users |  | 1d | 2005-01-04 A | 2005-01-04 A |  | 100% | start no earlier than 2005-01-04 | Brian; Vinay | 16h | 16h |
| 115 | 1.4.4.2.2.13 | Assign Protection Group to User Roles |  | 1d | 2005-01-05 A | 2005-01-05 A | 114 | 100% |  | Brian; Vinay | 16h | 16h |
| 116 | 1.4.4.2.2.14 | **Struts Interface** |  | 46d | 2004-12-03 A | 2005-02-04 A |  | 100% |  | Kunal; Eric | 1464h | 1464h |
| 117 | 1.4.4.2.2.14.1 | Design HTML/JSP Pages |  | 46d | 2004-12-03 A | 2005-02-04 A |  | 100% |  | Kunal; Eric | 408h | 408h |
| 118 | 1.4.4.2.2.14.2 | Develop Struts Actions, Forms, Config, Validation |  | 45d | 2004-12-06 A | 2005-02-04 A |  | 100% | finish no earlier than 2005-02-04 | Kunal | 360h | 360h |
| 119 | 1.4.4.2.2.15 | Code Reviews (Onging Task) |  | 27d | 2004-11-30 A | 2005-01-05 A |  | 100% | finish no earlier than 2005-01-05 | Vinay; Brian | 368h | 368h |
| 120 | 1.4.4.2.2.16 | **Testing** |  | 15d | 2005-01-14 A | 2005-02-04 A |  | 100% |  | Brian | 344h | 344h |
| 121 | 1.4.4.2.2.16.1 | Unit Testing Complete | milestone | 0d | 2005-01-14 A | 2005-01-14 A | 116, 118 | 100% | start no earlier than 2004-12-15 | Kunal |  |  |
| 122 | 1.4.4.2.2.16.2 | **Integration Testing (UPT Only)** |  | 11d | 2005-01-21 A | 2005-02-04 A | 121 | 100% |  |  | 176h | 176h |
| 123 | 1.4.4.2.2.16.2.1 | Testing |  | 11d | 2005-01-21 A | 2005-02-04 A |  | 100% | finish no earlier than 2005-02-04 | Eric | 88h | 88h |
| 124 | 1.4.4.2.2.16.2.2 | Defect Fixes |  | 11d | 2005-01-21 A | 2005-02-04 A |  | 100% | finish no earlier than 2005-02-04 | Kunal | 88h | 88h |
| 125 | 1.4.4.2.2.16.3 | **Integration Testing Authorization** |  | 3d | 2005-01-21 A | 2005-01-25 A | 121, 82 | 100% |  |  | 48h | 48h |
| 126 | 1.4.4.2.2.16.3.1 | Testing |  | 1d | 2005-01-21 A | 2005-01-21 A |  | 100% |  | Vinay; Kunal | 16h | 16h |
| 127 | 1.4.4.2.2.16.3.2 | Defect Fixes |  | 2d | 2005-01-24 A | 2005-01-25 A | 126 | 100% |  | Vinay; Kunal | 32h | 32h |
| 128 | 1.4.4.2.3 | Presentation Dry Run |  | 1.5d | 2005-01-26 A | 2005-01-27 A | 125 | 100% | start no earlier than 2005-01-14 | Vinay; Kunal | 24h | 24h |
| 129 | 1.4.4.2.4 | User Working Group Review |  | 0.5d | 2005-02-07 A | 2005-02-28 A | 124, 128 | 100% | start no earlier than 2005-01-27 | Brian; Vinay; Eric; Kunal | 8h | 8h |
| 130 | 1.4.4.2.5 | API Load testing |  | 7d | 2005-03-08 A | 2005-03-16 A | 142 | 100% | start no earlier than 2005-03-08 | Vinay | 56h | 56h |
| 131 | 1.4.4.2.6 | Synch the EA Model |  | 1d | 2004-09-27 A | 2004-09-27 A |  | 100% |  |  |  |  |
| 132 | 1.4.4.3 | Iteration IV Complete | milestone | 0d | 2005-01-14 A | 2005-01-14 A |  | 100% | start no earlier than 2005-01-14 |  |  |  |

| ID | WBS | Task | Type | Duration | Start | Finish | Predecessors | Complete | Constraint | Resources | Work | Actual work |
| --- | --- | --- | --- | --- | --- | --- | --- | --- | --- | --- | --- | --- |
| 133 | 1.5 | **Transition** |  | 134d? | 2004-09-27 A | 2005-03-31 A |  | 100% |  |  | 889.6h | 889.6h |
| 134 | 1.5.1 | **Iteration I** |  | 127.5d? | 2004-09-27 A | 2005-03-23 A |  | 100% |  |  | 705.6h | 705.6h |
| 135 | 1.5.1.1 | **Documentation** |  | 33d | 2005-01-21 A | 2005-03-08 A |  | 100% |  |  | 497.6h | 497.6h |
| 136 | 1.5.1.1.1 | QA of BackEnd APIs (2 days Task) | milestone | 0d | 2005-01-22 A | 2005-01-23 A |  | 100% |  | Kunal |  |  |
| 137 | 1.5.1.1.2 | UPT Deployment Guide Document |  | 11d | 2005-01-21 A | 2005-02-04 A |  | 100% | finish no earlier than 2005-02-04 | Kunal; Eric | 176h | 176h |
| 138 | 1.5.1.1.3 | Java Docs |  | 4d | 2005-01-24 A | 2005-01-27 A |  | 100% | start no earlier than 2005-01-24 | Kunal; Vinay | 41.6h | 41.6h |
| 139 | 1.5.1.1.4 | UPT User Guide |  | 5d | 2005-02-07 A | 2005-02-11 A | 137 | 100% | start no earlier than 2005-02-07 | Eric; Vinay | 80h | 80h |
| 140 | 1.5.1.1.5 | API Guide |  | 3d | 2005-02-14 A | 2005-02-16 A | 139 | 100% |  | Vinay | 24h | 24h |
| 141 | 1.5.1.1.6 | csm Application developers guide |  | 10d | 2005-02-23 A | 2005-03-08 A |  | 100% | start no earlier than 2005-02-23 | Eric; Vinay; Kunal | 176h | 176h |
| 142 | 1.5.1.1.7 | Input to caCore Technical Guide |  | 1d | 2005-02-17 A | 2005-02-17 A | 141 | 100% | finish no earlier than 2005-02-14 |  |  |  |
| 143 | 1.5.1.2 | **Integration Pilot (Release One)** |  | 127.5d? | 2004-09-27 A | 2005-03-23 A |  | 100% |  |  | 208h | 208h |
| 144 | 1.5.1.2.1 | **Client Implementation (with c3pr)** |  | 8d | 2005-02-25 A | 2005-03-08 A | 122 | 100% |  |  | 72h | 72h |
| 145 | 1.5.1.2.1.1 | Design |  | 2d | 2005-02-25 A | 2005-02-28 A |  | 100% | start no earlier than 2005-01-12 | Vinay | 16h | 16h |
| 146 | 1.5.1.2.1.2 | Development |  | 5d | 2005-02-28 A | 2005-03-04 A |  | 100% |  | Kunal | 40h | 40h |
| 147 | 1.5.1.2.1.3 | Testing |  | 2d | 2005-03-07 A | 2005-03-08 A | 146 | 100% |  | Kunal | 16h | 16h |
| 148 | 1.5.1.2.2 | Integration Testing |  | 5d | 2005-03-09 A | 2005-03-15 A | 147 | 100% | start no earlier than 2005-01-25 | Vinay; Eric | 80h | 80h |
| 149 | 1.5.1.2.3 | Evaluate Results |  | 0.5d | 2005-03-16 A | 2005-03-16 A | 148 | 100% |  | Vinay; Eric | 8h | 8h |
| 150 | 1.5.1.2.4 | Apply Needed Enhancements |  | 5d | 2005-03-16 A | 2005-03-23 A | 149 | 100% |  | Vinay | 40h | 40h |
| 151 | 1.5.1.2.5 | Synch the EA Model |  | 1d? | 2004-09-27 A | 2004-09-27 A |  | 100% |  | Vinay | 8h | 8h |
| 152 | 1.5.1.3 | Iteration I Complete | milestone | 0d | 2005-02-15 A | 2005-02-15 A |  | 100% | start no earlier than 2005-02-15 |  |  |  |
| 153 | 1.5.2 | **Iteration II** |  | 28d | 2005-02-18 A | 2005-03-29 A |  | 100% |  |  | 184h | 184h |
| 154 | 1.5.2.1 | Deploy UPT on QA |  | 2d | 2005-02-18 A | 2005-02-21 A |  | 100% | start no earlier than 2005-02-18 | Eric | 16h | 16h |
| 155 | 1.5.2.2 | Testing on QA |  | 5d | 2005-02-21 A | 2005-02-25 A |  | 100% | start no earlier than 2005-02-21 | Eric | 40h | 40h |
| 156 | 1.5.2.3 | Test on JBOSS 4 |  | 5d | 2005-02-21 A | 2005-02-25 A |  | 100% | start no earlier than 2005-02-21 | Vinay | 40h | 40h |
| 157 | 1.5.2.4 | Staging |  | 5d | 2005-03-16 A | 2005-03-22 A |  | 100% | start no earlier than 2005-03-16 | Vinay | 40h | 40h |
| 158 | 1.5.2.5 | Testing |  | 3d | 2005-02-22 A | 2005-02-24 A |  | 100% | start no earlier than 2005-02-22 | Vinay; Eric | 48h | 48h |
| 159 | 1.5.2.6 | Iteration II Complete | milestone | 0d | 2005-02-28 A | 2005-02-28 A |  | 100% | start no earlier than 2005-02-28 |  |  |  |
| 160 | 1.5.2.7 | Tag the CVS |  | 1d | 2005-03-29 A | 2005-03-29 A |  | 100% |  |  |  |  |
| 161 | 1.5.3 | caCore Release 3 |  | 1d | 2005-03-31 A | 2005-03-31 A |  | 100% | start no earlier than 2005-03-07 |  |  |  |
