# NCICBSecurityService_phase3

Schedule from MS Project, 2004-09-26 to 2005-05-23, A marks actual dates.
Home

## Calendars

- Standard: Mon-Fri 08:00-12:00, 13:00-17:00; Sat-Sun off.

## Resources

| Resource |
| --- |
| Vinay |
| Resource 1 |
| Brian |
| Kalpesh |
| Kunal |
| Eric |
| Charles |
| Team |
| Steve |
| JJ |
| Kunal Eric |
| Viany |

## Schedule

| ID | WBS | Task | Duration | Start | Finish | Predecessors | Complete | Remaining | Total slack | Free slack | Constraint | Resources | Work | Actual work |
| --- | --- | --- | --- | --- | --- | --- | --- | --- | --- | --- | --- | --- | --- | --- |
| 1 | 1 | **Security Module (Release four)** | 171d? | 2004-09-26 A | 2005-05-23 |  | 78% | 36.77d? | 0d |  |  |  | 10321.6h | 8661.6h |
| 2 | 1.1 | **Inception** | 18d | 2005-04-01 A | 2005-04-26 |  | 14% | 15.45d | 19d |  |  |  | 760h | 116h |
| 3 | 1.1.1 | Phase 3 Evaluation | 7d | 2005-04-04 A | 2005-04-12 |  | 50% | 3.5d | 11d |  | start no earlier than 2004-08-02 | Vinay | 56h | 28h |
| 4 | 1.1.2 | RI documentation | 7d | 2005-04-01 A | 2005-04-11 |  | 14% | 6d | 16d | 0d | finish no earlier than 2005-04-11 | Kunal; Eric | 112h | 16h |
| 5 | 1.1.3 | CM configuration | 2d | 2005-04-12 | 2005-04-13 | 4 |  |  | 16d | 0d | start no earlier than 2005-04-07 | Vinay; Kunal | 32h |  |
| 6 | 1.1.4 | Scope and Vision Document | 15d | 2005-04-01 A | 2005-04-21 |  | 7% | 14d | 22d |  | finish no earlier than 2005-04-21 | Vinay; Eric | 232h | 8h |
| 7 | 1.1.5 | Supplentary Specifications | 3d | 2005-04-14 | 2005-04-18 | 5 |  |  | 16d | 0d | start no earlier than 2004-09-01 | Vinay | 24h |  |
| 8 | 1.1.6 | caBIG Annual Meeting | 2d | 2005-04-12 A | 2005-04-13 A |  | 100% |  |  |  |  | Vinay; Eric; Kunal; Kalpesh | 64h | 64h |
| 9 | 1.1.7 | Fuctional Specifications | 5d | 2005-04-14 | 2005-04-20 | 8 |  |  | 19d | 0d |  | Vinay | 40h |  |
| 10 | 1.1.8 | Identify Risk List | 3d | 2005-04-21 | 2005-04-25 | 9 |  |  | 19d | 0d |  | Kalpesh | 24h |  |
| 11 | 1.1.9 | Update Detail task plan | 1d | 2005-04-26 | 2005-04-26 | 10 |  |  | 19d |  | start no earlier than 2005-04-11 | Vinay; Charles | 16h |  |
| 12 | 1.1.10 | **A dot release modification** | 6d | 2005-04-14 | 2005-04-21 | 5 |  |  | 22d |  |  | Vinay; Kunal | 160h |  |
| 13 | 1.1.10.1 | Update API | 2d | 2005-04-14 | 2005-04-15 |  |  |  | 22d | 0d |  | Vinay | 16h |  |
| 14 | 1.1.10.2 | Test API | 2d | 2005-04-14 | 2005-04-15 |  |  |  | 26d |  |  | Kunal | 16h |  |
| 15 | 1.1.10.3 | Incorporate in RI | 2d | 2005-04-18 | 2005-04-19 | 13 |  |  | 22d | 0d |  | Kunal | 16h |  |
| 16 | 1.1.10.4 | Test RI | 2d | 2005-04-20 | 2005-04-21 | 15 |  |  | 22d |  |  | Kunal | 16h |  |
| 17 | 1.2 | **Elaboration** | 167d? | 2004-10-01 A | 2005-05-23 |  | 50% | 82.75d? | 0d |  |  |  | 780h | 372h |
| 18 | 1.2.1 | **Iteration I** | 167d | 2004-10-01 A | 2005-05-23 |  | 27% | 121.77d | 0d |  |  |  | 480h | 108h |
| 19 | 1.2.1.1 | Prototype development | 20d | 2005-04-26 | 2005-05-23 |  |  |  | 0d |  | start no earlier than 2005-04-26 | Vinay; Kunal | 320h |  |
| 20 | 1.2.1.2 | Level 1 - 2 Use Cases | 6d | 2005-05-02 | 2005-05-09 |  |  |  | 10d |  | start no earlier than 2005-05-02 | Vinay | 48h |  |
| 21 | 1.2.1.3 | Risk List Priority | 3d | 2005-05-10 A | 2005-05-12 A |  | 100% |  |  |  |  | Vinay | 24h | 24h |
| 22 | 1.2.1.4 | Detailed Iteration Release Plan | 5d | 2005-04-11 A | 2005-04-15 |  | 95% | 0.25d | 26d |  |  | Vinay; Brian | 80h | 76h |
| 23 | 1.2.1.5 | **Finalize Requirements** | 9d | 2004-10-01 A | 2004-10-13 A |  | 100% |  |  |  |  |  | 8h | 8h |
| 24 | 1.2.1.5.1 | Stakeholder Sign Off | 1d | 2004-10-01 A | 2004-10-01 A |  | 100% |  |  |  | start no earlier than 2004-10-01 |  |  |  |
| 25 | 1.2.1.5.2 | User Working Group Review | 1d | 2004-10-13 A | 2004-10-13 A | 24 | 100% |  |  |  | start no earlier than 2004-10-13 | Vinay | 8h | 8h |

Notes:
- 24: An email was sent out to the group and no one responded. Hence this task has been marked as 100%

| ID | WBS | Task | Duration | Start | Finish | Predecessors | Complete | Remaining | Total slack | Constraint | Resources | Work | Actual work |
| --- | --- | --- | --- | --- | --- | --- | --- | --- | --- | --- | --- | --- | --- |
| 26 | 1.2.2 | **Iteration II** | 17d? | 2004-10-05 A | 2004-10-27 |  | 93% | 1.27d? | 148d |  |  | 300h | 264h |
| 27 | 1.2.2.1 | Develop Architecture Prototype | 3d | 2004-10-25 A | 2004-10-27 A |  | 100% |  |  | start no earlier than 2004-10-25 |  |  |  |
| 28 | 1.2.2.2 | Software Architecture Document | 15d | 2004-10-05 A | 2004-10-25 |  | 90% | 1.5d | 150d | finish no earlier than 2004-10-25 | Vinay; Kunal; Eric | 276h | 240h |
| 29 | 1.2.2.3 | Architecture Review | 1d? | 2004-10-26 A | 2004-10-26 A | 28 | 100% |  |  |  | Brian; Kalpesh | 16h | 16h |
| 30 | 1.2.2.4 | Prioritize Risk List | 1d | 2004-10-26 A | 2004-10-26 A |  | 100% |  |  | start no earlier than 2004-10-26 | Vinay | 8h | 8h |
| 31 | 1.3 | Phase Review | 1d? | 2004-09-27 | 2004-09-27 |  |  |  | 170d |  | Eric; Kalpesh | 16h |  |
| 32 | 1.4 | **Construction** | 130d? | 2004-09-26 A | 2005-03-25 |  | 89% | 14.72d? | 41d |  |  | 7876h | 7284h |
| 33 | 1.4.1 | **Iteration I** | 40d? | 2004-09-26 A | 2004-11-19 A |  | 100% |  |  |  |  | 328h | 328h |
| 34 | 1.4.1.1 | Iteration Plan | 1d | 2004-10-26 A | 2004-10-26 A |  | 100% |  |  | start no earlier than 2004-10-26 | Vinay; Kunal | 16h | 16h |
| 35 | 1.4.1.2 | **Authentication** | 40d? | 2004-09-27 A | 2004-11-19 A |  | 100% |  |  |  |  | 312h | 312h |
| 36 | 1.4.1.2.1 | **Design** | 4d | 2004-10-27 A | 2004-11-01 A |  | 100% |  |  |  |  | 56h | 56h |
| 37 | 1.4.1.2.1.1 | **Documentation** | 4d | 2004-10-27 A | 2004-11-01 A |  | 100% |  |  |  |  | 56h | 56h |
| 38 | 1.4.1.2.1.1.1 | Level 3 - 4 Use Cases | 0.5d | 2004-10-27 A | 2004-10-27 A |  | 100% |  |  | start no earlier than 2004-10-27 | Kunal; Vinay | 8h | 8h |
| 39 | 1.4.1.2.1.1.2 | Use Case Model | 0.5d | 2004-10-27 A | 2004-10-27 A | 38 | 100% |  |  | start no earlier than 2004-10-27 | Vinay; Kunal | 8h | 8h |
| 40 | 1.4.1.2.1.1.3 | Working Group Use Case Review | 1d | 2004-10-28 A | 2004-10-28 A | 39 | 100% |  |  |  | Kalpesh | 8h | 8h |
| 41 | 1.4.1.2.1.1.4 | UML Sequence Diagram | 1d | 2004-10-29 A | 2004-10-29 A | 40 | 100% |  |  |  | Kunal | 8h | 8h |
| 42 | 1.4.1.2.1.1.5 | UML Class Diagram | 1d | 2004-11-01 A | 2004-11-01 A | 41 | 100% |  |  |  | Vinay | 8h | 8h |
| 43 | 1.4.1.2.1.1.6 | UML Activity Diagram | 1d | 2004-10-29 A | 2004-10-29 A |  | 100% |  |  | start no earlier than 2004-10-29 | Vinay | 8h | 8h |
| 44 | 1.4.1.2.1.1.7 | Design Review | 1d | 2004-11-01 A | 2004-11-01 A | 43 | 100% |  |  |  | Brian | 8h | 8h |
| 45 | 1.4.1.2.2 | **Implementation** | 11d | 2004-11-01 A | 2004-11-15 A |  | 100% |  |  |  |  | 208h | 208h |
| 46 | 1.4.1.2.2.1 | Data Model Enhancement | 5d | 2004-11-01 A | 2004-11-05 A |  | 100% |  |  | start no earlier than 2004-11-01 | Vinay; Kalpesh | 80h | 80h |
| 47 | 1.4.1.2.2.2 | Data Model Documentation with Examples | 1d | 2004-11-08 A | 2004-11-08 A |  | 100% |  |  | start no earlier than 2004-11-08 | Vinay | 8h | 8h |
| 48 | 1.4.1.2.2.3 | **JAAS Authentication Modules** | 10d | 2004-11-02 A | 2004-11-15 A |  | 100% |  |  |  |  | 120h | 120h |
| 49 | 1.4.1.2.2.3.1 | LDAP | 5d | 2004-11-02 A | 2004-11-08 A | 44 | 100% |  |  | start no earlier than 2004-11-02 | Kunal | 40h | 40h |
| 50 | 1.4.1.2.2.3.2 | RBDMS | 5d | 2004-11-08 A | 2004-11-12 A | 44 | 100% |  |  | finish no earlier than 2004-11-12 | Vinay | 40h | 40h |
| 51 | 1.4.1.2.2.3.3 | Junit Test Development | 4d | 2004-11-09 A | 2004-11-12 A |  | 100% |  |  | finish no earlier than 2004-11-12 | Brian | 32h | 32h |
| 52 | 1.4.1.2.2.3.4 | Code Reviews | 0.33d | 2004-11-15 A | 2004-11-15 A | 49, 50, 51 | 100% |  |  | finish no earlier than 2004-11-15 | Brian; Kalpesh; Charles | 8h | 8h |

| ID | WBS | Task | Type | Duration | Start | Finish | Predecessors | Complete | Constraint | Resources | Work | Actual work |
| --- | --- | --- | --- | --- | --- | --- | --- | --- | --- | --- | --- | --- |
| 53 | 1.4.1.2.3 | **Unit Testing** |  | 40d? | 2004-09-27 A | 2004-11-19 A |  | 100% |  |  | 48h | 48h |
| 54 | 1.4.1.2.3.1 | Perform Testing |  | 1d | 2004-11-16 A | 2004-11-16 A | 52 | 100% | start no earlier than 2004-11-15 | Kunal | 8h | 8h |
| 55 | 1.4.1.2.3.2 | Evaluate Results |  | 1d | 2004-11-17 A | 2004-11-17 A | 54 | 100% | start no earlier than 2004-11-16 | Eric; Vinay; Kunal | 24h | 24h |
| 56 | 1.4.1.2.3.3 | Integration Testing |  | 1d | 2004-11-18 A | 2004-11-18 A | 55 | 100% |  | Eric | 8h | 8h |
| 57 | 1.4.1.2.3.4 | User Working Group Review (SAD, Design Models) |  | 1d | 2004-11-19 A | 2004-11-19 A | 56 | 100% |  | Kalpesh | 8h | 8h |
| 58 | 1.4.1.2.3.5 | Synch the EA Model |  | 1d? | 2004-09-27 A | 2004-09-27 A |  | 100% |  |  |  |  |
| 59 | 1.4.1.3 | Iteration I Complete | milestone | 0d | 2004-09-26 A | 2004-09-26 A |  | 100% |  |  |  |  |
| 60 | 1.4.2 | **Iteration II** |  | 23.5d? | 2004-11-23 A | 2004-12-24 A |  | 100% |  |  | 868h | 868h |
| 61 | 1.4.2.1 | Iteration Plan |  | 1d | 2004-11-30 A | 2004-11-30 A |  | 100% | start no earlier than 2004-11-30 | Vinay | 8h | 8h |
| 62 | 1.4.2.2 | **Authorization** |  | 23.5d? | 2004-11-23 A | 2004-12-24 A |  | 100% |  |  | 860h | 860h |
| 63 | 1.4.2.2.1 | **Design** |  | 6d | 2004-12-01 A | 2004-12-08 A |  | 100% |  |  | 64h | 64h |
| 64 | 1.4.2.2.1.1 | **Documentation** |  | 6d | 2004-12-01 A | 2004-12-08 A |  | 100% |  |  | 64h | 64h |
| 65 | 1.4.2.2.1.1.1 | Level 3 - 4 Use Cases |  | 1d | 2004-12-01 A | 2004-12-01 A |  | 100% | start no earlier than 2004-12-01 | Vinay; Kunal | 16h | 16h |
| 66 | 1.4.2.2.1.1.2 | Use Case Model |  | 1d | 2004-12-01 A | 2004-12-01 A | 61 | 100% | start no earlier than 2004-11-22 | Kunal | 8h | 8h |
| 67 | 1.4.2.2.1.1.3 | User Working Group Review |  | 1d | 2004-12-02 A | 2004-12-02 A | 66 | 100% |  | Kalpesh | 8h | 8h |
| 68 | 1.4.2.2.1.1.4 | UML Sequence Diagram |  | 1d | 2004-12-03 A | 2004-12-03 A | 67 | 100% |  | Kunal | 8h | 8h |
| 69 | 1.4.2.2.1.1.5 | UML Class Diagram |  | 1d | 2004-12-06 A | 2004-12-06 A | 68 | 100% |  | Vinay | 8h | 8h |
| 70 | 1.4.2.2.1.1.6 | UML Activity Diagram |  | 1d | 2004-12-06 A | 2004-12-06 A |  | 100% | start no earlier than 2004-12-06 | Vinay | 8h | 8h |
| 71 | 1.4.2.2.1.1.7 | Design Review |  | 1d | 2004-12-07 A | 2004-12-07 A | 70 | 100% |  | Brian | 8h | 8h |
| 72 | 1.4.2.2.1.1.8 | UML Model for EVS |  | 2d | 2004-12-07 A | 2004-12-08 A |  | 100% | start no earlier than 2004-12-07 |  |  |  |
| 73 | 1.4.2.2.2 | **Implementation** |  | 23.5d? | 2004-11-23 A | 2004-12-24 A |  | 100% |  |  | 796h | 796h |
| 74 | 1.4.2.2.2.1 | Authorization XML Schema |  | 10d | 2004-12-09 A | 2004-12-22 A |  | 100% | start no earlier than 2004-12-09 | Vinay; Brian | 160h | 160h |
| 75 | 1.4.2.2.2.2 | **Authorization API** |  | 23.5d? | 2004-11-23 A | 2004-12-24 A |  | 100% |  |  | 636h | 636h |
| 76 | 1.4.2.2.2.2.1 | Enhance Phase I Object Model |  | 7d | 2004-11-23 A | 2004-12-01 A | 46 | 100% | start no earlier than 2004-12-23 | Vinay | 56h | 56h |

| ID | WBS | Task | Type | Duration | Start | Finish | Predecessors | Complete | Remaining | Total slack | Constraint | Resources | Work | Actual work |
| --- | --- | --- | --- | --- | --- | --- | --- | --- | --- | --- | --- | --- | --- | --- |
| 77 | 1.4.2.2.2.2.2 | **develop run time API** |  | 16.5d? | 2004-12-02 A | 2004-12-24 A | 76 | 100% |  |  |  | Brian; Vinay | 580h | 580h |
| 78 | 1.4.2.2.2.2.2.1 | Implement AuthorizationManager Interface |  | 15d | 2004-12-02 A | 2004-12-22 A |  | 100% |  |  | finish no earlier than 2004-12-22 | Brian; Vinay | 240h | 240h |
| 79 | 1.4.2.2.2.2.2.2 | Junit Test Development |  | 4.5d | 2004-12-16 A | 2004-12-22 A |  | 100% |  |  | finish no earlier than 2004-12-22 | Brian; Vinay | 72h | 72h |
| 80 | 1.4.2.2.2.2.2.3 | Code Review |  | 1d | 2004-12-23 A | 2004-12-24 A | 79 | 100% |  |  |  | Charles; Steve | 16h | 16h |
| 81 | 1.4.2.2.2.2.2.4 | Synch the EA Model |  | 1d? | 2004-12-02 A | 2004-12-02 A |  | 100% |  |  |  |  |  |  |
| 82 | 1.4.2.3 | Iteration II Complete | milestone | 0d | 2004-12-21 A | 2004-12-21 A |  | 100% |  |  | start no earlier than 2004-12-21 |  |  |  |
| 83 | 1.4.3 | **Iteration III** |  | 130d | 2004-09-27 A | 2005-03-25 |  | 38% | 80.98d | 41d |  |  | 1152h | 560h |
| 84 | 1.4.3.1 | Iteration Plan |  | 1d | 2004-12-21 | 2004-12-21 |  |  |  | 109d | start no earlier than 2004-12-21 |  |  |  |
| 85 | 1.4.3.2 | **Prototype (Reference Implementation)** |  | 130d | 2004-09-27 A | 2005-03-25 |  | 38% | 80.17d | 41d |  |  | 1152h | 560h |
| 86 | 1.4.3.2.1 | **Implementation** |  | 59d | 2005-01-04 A | 2005-03-25 |  | 58% | 24.58d | 41d |  |  | 776h | 536h |
| 87 | 1.4.3.2.1.1 | **Demo Application** |  | 59d | 2005-01-04 A | 2005-03-25 |  | 58% | 24.58d | 41d |  |  | 776h | 536h |
| 88 | 1.4.3.2.1.1.1 | Use Case Development |  | 1d | 2005-01-07 A | 2005-01-07 A |  | 100% |  |  | start no earlier than 2005-01-07 | Eric | 8h | 8h |
| 89 | 1.4.3.2.1.1.2 | Integrate Authentication |  | 2d | 2005-01-27 A | 2005-01-28 A | 84 | 100% |  |  | finish no earlier than 2005-01-28 | Vinay; Brian | 32h | 32h |
| 90 | 1.4.3.2.1.1.3 | **User Interface** |  | 21d | 2005-01-04 A | 2005-02-01 A | 89 | 100% |  |  |  | Vinay; Brian | 496h | 496h |
| 91 | 1.4.3.2.1.1.3.1 | Develop Struts Actions, Forms, Config, Validation |  | 10d | 2005-01-04 A | 2005-02-01 A |  | 100% |  |  |  | Eric; Brian | 160h | 160h |
| 92 | 1.4.3.2.1.1.3.2 | domain/persistance |  | 8d | 2005-01-11 A | 2005-02-01 A |  | 100% |  |  | finish no earlier than 2005-01-20 |  |  |  |
| 93 | 1.4.3.2.1.1.4 | Integrate Authorization |  | 15d | 2005-03-07 | 2005-03-25 |  |  |  | 41d | start no earlier than 2005-03-07 | Brian; Vinay | 240h |  |
| 94 | 1.4.3.2.2 | **Documentation** |  | 109d | 2004-09-27 A | 2005-02-24 |  | 8% | 99.92d | 62d |  |  | 376h | 24h |
| 95 | 1.4.3.2.2.1 | User Guide (RI) |  | 23d | 2005-01-25 A | 2005-02-24 |  | 4% | 22d | 62d | finish no earlier than 2005-02-24 | Vinay; Eric | 368h | 16h |
| 96 | 1.4.3.2.2.2 | Synch the EA Model |  | 1d | 2004-09-27 A | 2004-09-27 A |  | 100% |  |  |  | Vinay | 8h | 8h |
| 97 | 1.4.4 | **Iteration IV** |  | 123d | 2004-09-27 A | 2005-03-16 A |  | 100% |  |  |  | Brian | 5528h | 5528h |
| 98 | 1.4.4.1 | Iteration Plan |  | 2d | 2004-10-18 A | 2004-10-19 A |  | 100% |  |  | start no earlier than 2004-10-18 | Brian | 16h | 16h |
| 99 | 1.4.4.2 | **User Provisioning** |  | 123d | 2004-09-27 A | 2005-03-16 A |  | 100% |  |  |  | Brian | 4680h | 4680h |
| 100 | 1.4.4.2.1 | **Design** |  | 27d | 2004-10-20 A | 2004-11-25 A |  | 100% |  |  |  | Brian | 504h | 504h |
| 101 | 1.4.4.2.1.1 | **Documentation** |  | 27d | 2004-10-20 A | 2004-11-25 A |  | 100% |  |  |  | Brian | 288h | 288h |
| 102 | 1.4.4.2.1.1.1 | Level 3 - 4 Use Cases |  | 1d | 2004-10-27 A | 2004-10-27 A | 98 | 100% |  |  | start no earlier than 2004-10-27 | Brian | 8h | 8h |
| 103 | 1.4.4.2.1.1.2 | Use Case Model |  | 6d | 2004-10-20 A | 2004-10-27 A | 98 | 100% |  |  | finish no earlier than 2004-10-27 | Brian | 48h | 48h |
| 104 | 1.4.4.2.1.1.3 | Gather Requirements |  | 5d | 2004-10-28 A | 2004-11-03 A | 103 | 100% |  |  |  |  |  |  |
| 105 | 1.4.4.2.1.1.4 | Create DDL for mysql |  | 1d | 2004-11-10 A | 2004-11-10 A |  | 100% |  |  | start no earlier than 2004-11-10 |  |  |  |
| 106 | 1.4.4.2.1.1.5 | Generate Hibernate Mappings |  | 1d | 2004-11-22 A | 2004-11-22 A | 105 | 100% |  |  |  |  |  |  |
| 107 | 1.4.4.2.1.1.6 | Generate Hibernate Mappings |  | 1d | 2004-11-23 A | 2004-11-23 A | 106 | 100% |  |  |  |  |  |  |
| 108 | 1.4.4.2.1.1.7 | UML Class Diagram |  | 1d | 2004-11-24 A | 2004-11-24 A | 107 | 100% |  |  |  | Brian | 8h | 8h |
| 109 | 1.4.4.2.1.1.8 | Design Review |  | 1d | 2004-11-25 A | 2004-11-25 A | 108 | 100% |  |  | finish no earlier than 2004-11-15 | Eric | 8h | 8h |

Notes:
- 90: Gap of a week exists. Evaluate again when Iteration 3 begins

| ID | WBS | Task | Type | Duration | Start | Finish | Predecessors | Complete | Constraint | Resources | Work | Actual work |
| --- | --- | --- | --- | --- | --- | --- | --- | --- | --- | --- | --- | --- |
| 110 | 1.4.4.2.2 | **Implementation** |  | 50d | 2004-11-29 A | 2005-02-04 A |  | 100% |  | Brian; Vinay | 3272h | 3272h |
| 111 | 1.4.4.2.2.1 | Create Hibernate Mappings |  | 4d | 2004-12-03 A | 2004-12-08 A |  | 100% | start no earlier than 2004-12-03 | Brian; Vinay | 64h | 64h |
| 112 | 1.4.4.2.2.2 | Create Roles |  | 3.75d | 2004-11-29 A | 2004-12-10 A | 111 | 100% | start no earlier than 2004-11-29 | Brian; Vinay | 40h | 40h |
| 113 | 1.4.4.2.2.3 | Modify Roles |  | 2.5d | 2004-12-10 A | 2004-12-14 A | 112 | 100% |  | Brian; Vinay | 40h | 40h |
| 114 | 1.4.4.2.2.4 | Create Privileges |  | 1.5d | 2004-12-14 A | 2004-12-16 A | 113 | 100% |  | Brian; Vinay | 24h | 24h |
| 115 | 1.4.4.2.2.5 | Modify Privileges |  | 1.5d | 2004-12-16 A | 2004-12-17 A | 114 | 100% |  | Brian; Vinay | 24h | 24h |
| 116 | 1.4.4.2.2.6 | Assign Privileges to Roles |  | 1.5d | 2004-12-17 A | 2004-12-21 A | 115 | 100% |  | Brian; Vinay | 24h | 24h |
| 117 | 1.4.4.2.2.7 | Create Protection Elements |  | 1d | 2004-12-21 A | 2004-12-22 A | 116 | 100% |  | Brian; Vinay | 16h | 16h |
| 118 | 1.4.4.2.2.8 | Modify Protection Elements |  | 1d | 2004-12-22 A | 2004-12-23 A | 117 | 100% |  | Brian [133.3%]; Vinay | 16h | 16h |
| 119 | 1.4.4.2.2.9 | Create Protection Group |  | 1d | 2004-12-23 A | 2004-12-24 A | 118 | 100% |  | Brian [33.3%]; Vinay | 16h | 16h |
| 120 | 1.4.4.2.2.10 | Modify Protection Group |  | 1d | 2004-12-24 A | 2004-12-27 A | 119 | 100% |  | Brian [11.1%]; Vinay | 16h | 16h |
| 121 | 1.4.4.2.2.11 | Assign Protection Elements to Groups |  | 1d | 2004-12-27 A | 2004-12-28 A | 120 | 100% |  | Brian [33.3%]; Vinay | 16h | 16h |
| 122 | 1.4.4.2.2.12 | Assign Protection Elements to Users |  | 1d | 2005-01-04 A | 2005-01-04 A |  | 100% | start no earlier than 2005-01-04 | Brian; Vinay | 16h | 16h |
| 123 | 1.4.4.2.2.13 | Assign Protection Group to User Roles |  | 1d | 2005-01-05 A | 2005-01-05 A | 122 | 100% |  | Brian; Vinay | 16h | 16h |
| 124 | 1.4.4.2.2.14 | **Struts Interface** |  | 46d | 2004-12-03 A | 2005-02-04 A |  | 100% |  | Kunal; Eric | 1464h | 1464h |
| 125 | 1.4.4.2.2.14.1 | Design HTML/JSP Pages |  | 46d | 2004-12-03 A | 2005-02-04 A |  | 100% |  | Kunal; Eric | 408h | 408h |
| 126 | 1.4.4.2.2.14.2 | Develop Struts Actions, Forms, Config, Validation |  | 45d | 2004-12-06 A | 2005-02-04 A |  | 100% | finish no earlier than 2005-02-04 | Kunal | 360h | 360h |
| 127 | 1.4.4.2.2.15 | Code Reviews (Onging Task) |  | 27d | 2004-11-30 A | 2005-01-05 A |  | 100% | finish no earlier than 2005-01-05 | Vinay; Brian | 368h | 368h |
| 128 | 1.4.4.2.2.16 | **Testing** |  | 15d | 2005-01-14 A | 2005-02-04 A |  | 100% |  | Brian | 344h | 344h |
| 129 | 1.4.4.2.2.16.1 | Unit Testing Complete | milestone | 0d | 2005-01-14 A | 2005-01-14 A | 124, 126 | 100% | start no earlier than 2004-12-15 | Kunal |  |  |
| 130 | 1.4.4.2.2.16.2 | **Integration Testing (UPT Only)** |  | 11d | 2005-01-21 A | 2005-02-04 A | 129 | 100% |  |  | 176h | 176h |
| 131 | 1.4.4.2.2.16.2.1 | Testing |  | 11d | 2005-01-21 A | 2005-02-04 A |  | 100% | finish no earlier than 2005-02-04 | Eric | 88h | 88h |
| 132 | 1.4.4.2.2.16.2.2 | Defect Fixes |  | 11d | 2005-01-21 A | 2005-02-04 A |  | 100% | finish no earlier than 2005-02-04 | Kunal | 88h | 88h |
| 133 | 1.4.4.2.2.16.3 | **Integration Testing Authorization** |  | 3d | 2005-01-21 A | 2005-01-25 A | 129, 90 | 100% |  |  | 48h | 48h |
| 134 | 1.4.4.2.2.16.3.1 | Testing |  | 1d | 2005-01-21 A | 2005-01-21 A |  | 100% |  | Vinay; Kunal | 16h | 16h |
| 135 | 1.4.4.2.2.16.3.2 | Defect Fixes |  | 2d | 2005-01-24 A | 2005-01-25 A | 134 | 100% |  | Vinay; Kunal | 32h | 32h |
| 136 | 1.4.4.2.3 | Presentation Dry Run |  | 1.5d | 2005-01-26 A | 2005-01-27 A | 133 | 100% | start no earlier than 2005-01-14 | Vinay; Kunal | 24h | 24h |
| 137 | 1.4.4.2.4 | User Working Group Review |  | 0.5d | 2005-02-07 A | 2005-02-28 A | 132, 136 | 100% | start no earlier than 2005-01-27 | Brian; Vinay; Eric; Kunal | 8h | 8h |
| 138 | 1.4.4.2.5 | API Load testing |  | 7d | 2005-03-08 A | 2005-03-16 A | 150 | 100% | start no earlier than 2005-03-08 | Vinay | 56h | 56h |
| 139 | 1.4.4.2.6 | Synch the EA Model |  | 1d | 2004-09-27 A | 2004-09-27 A |  | 100% |  |  |  |  |
| 140 | 1.4.4.3 | Iteration IV Complete | milestone | 0d | 2005-01-14 A | 2005-01-14 A |  | 100% | start no earlier than 2005-01-14 |  |  |  |

| ID | WBS | Task | Type | Duration | Start | Finish | Predecessors | Complete | Constraint | Resources | Work | Actual work |
| --- | --- | --- | --- | --- | --- | --- | --- | --- | --- | --- | --- | --- |
| 141 | 1.5 | **Transition** |  | 134d? | 2004-09-27 A | 2005-03-31 A |  | 100% |  |  | 889.6h | 889.6h |
| 142 | 1.5.1 | **Iteration I** |  | 127.5d? | 2004-09-27 A | 2005-03-23 A |  | 100% |  |  | 705.6h | 705.6h |
| 143 | 1.5.1.1 | **Documentation** |  | 33d | 2005-01-21 A | 2005-03-08 A |  | 100% |  |  | 497.6h | 497.6h |
| 144 | 1.5.1.1.1 | QA of BackEnd APIs (2 days Task) | milestone | 0d | 2005-01-22 A | 2005-01-23 A |  | 100% |  | Kunal |  |  |
| 145 | 1.5.1.1.2 | UPT Deployment Guide Document |  | 11d | 2005-01-21 A | 2005-02-04 A |  | 100% | finish no earlier than 2005-02-04 | Kunal; Eric | 176h | 176h |
| 146 | 1.5.1.1.3 | Java Docs |  | 4d | 2005-01-24 A | 2005-01-27 A |  | 100% | start no earlier than 2005-01-24 | Kunal; Vinay | 41.6h | 41.6h |
| 147 | 1.5.1.1.4 | UPT User Guide |  | 5d | 2005-02-07 A | 2005-02-11 A | 145 | 100% | start no earlier than 2005-02-07 | Eric; Vinay | 80h | 80h |
| 148 | 1.5.1.1.5 | API Guide |  | 3d | 2005-02-14 A | 2005-02-16 A | 147 | 100% |  | Vinay | 24h | 24h |
| 149 | 1.5.1.1.6 | csm Application developers guide |  | 10d | 2005-02-23 A | 2005-03-08 A |  | 100% | start no earlier than 2005-02-23 | Eric; Vinay; Kunal | 176h | 176h |
| 150 | 1.5.1.1.7 | Input to caCore Technical Guide |  | 1d | 2005-02-17 A | 2005-02-17 A | 149 | 100% | finish no earlier than 2005-02-14 |  |  |  |
| 151 | 1.5.1.2 | **Integration Pilot (Release One)** |  | 127.5d? | 2004-09-27 A | 2005-03-23 A |  | 100% |  |  | 208h | 208h |
| 152 | 1.5.1.2.1 | **Client Implementation (with c3pr)** |  | 8d | 2005-02-25 A | 2005-03-08 A | 130 | 100% |  |  | 72h | 72h |
| 153 | 1.5.1.2.1.1 | Design |  | 2d | 2005-02-25 A | 2005-02-28 A |  | 100% | start no earlier than 2005-01-12 | Vinay | 16h | 16h |
| 154 | 1.5.1.2.1.2 | Development |  | 5d | 2005-02-28 A | 2005-03-04 A |  | 100% |  | Kunal | 40h | 40h |
| 155 | 1.5.1.2.1.3 | Testing |  | 2d | 2005-03-07 A | 2005-03-08 A | 154 | 100% |  | Kunal | 16h | 16h |
| 156 | 1.5.1.2.2 | Integration Testing |  | 5d | 2005-03-09 A | 2005-03-15 A | 155 | 100% | start no earlier than 2005-01-25 | Vinay; Eric | 80h | 80h |
| 157 | 1.5.1.2.3 | Evaluate Results |  | 0.5d | 2005-03-16 A | 2005-03-16 A | 156 | 100% |  | Vinay; Eric | 8h | 8h |
| 158 | 1.5.1.2.4 | Apply Needed Enhancements |  | 5d | 2005-03-16 A | 2005-03-23 A | 157 | 100% |  | Vinay | 40h | 40h |
| 159 | 1.5.1.2.5 | Synch the EA Model |  | 1d? | 2004-09-27 A | 2004-09-27 A |  | 100% |  | Vinay | 8h | 8h |
| 160 | 1.5.1.3 | Iteration I Complete | milestone | 0d | 2005-02-15 A | 2005-02-15 A |  | 100% | start no earlier than 2005-02-15 |  |  |  |
| 161 | 1.5.2 | **Iteration II** |  | 28d | 2005-02-18 A | 2005-03-29 A |  | 100% |  |  | 184h | 184h |
| 162 | 1.5.2.1 | Deploy UPT on QA |  | 2d | 2005-02-18 A | 2005-02-21 A |  | 100% | start no earlier than 2005-02-18 | Eric | 16h | 16h |
| 163 | 1.5.2.2 | Testing on QA |  | 5d | 2005-02-21 A | 2005-02-25 A |  | 100% | start no earlier than 2005-02-21 | Eric | 40h | 40h |
| 164 | 1.5.2.3 | Test on JBOSS 4 |  | 5d | 2005-02-21 A | 2005-02-25 A |  | 100% | start no earlier than 2005-02-21 | Vinay | 40h | 40h |
| 165 | 1.5.2.4 | Staging |  | 5d | 2005-03-16 A | 2005-03-22 A |  | 100% | start no earlier than 2005-03-16 | Vinay | 40h | 40h |
| 166 | 1.5.2.5 | Testing |  | 3d | 2005-02-22 A | 2005-02-24 A |  | 100% | start no earlier than 2005-02-22 | Vinay; Eric | 48h | 48h |
| 167 | 1.5.2.6 | Iteration II Complete | milestone | 0d | 2005-02-28 A | 2005-02-28 A |  | 100% | start no earlier than 2005-02-28 |  |  |  |
| 168 | 1.5.2.7 | Tag the CVS |  | 1d | 2005-03-29 A | 2005-03-29 A |  | 100% |  |  |  |  |
| 169 | 1.5.3 | caCore Release 3 |  | 1d | 2005-03-31 A | 2005-03-31 A |  | 100% | start no earlier than 2005-03-07 |  |  |  |
